# Module 4_Revised MPP_Team 1

Schedule from MS Project, 2021-10-11 to 2021-11-30, costs in $.

## Calendars

- Standard: Mon-Fri 08:00-12:00, 13:00-17:00; Sat-Sun off. Exceptions (off unless hours are given): 2021-11-25 to 2021-11-26 (Holiday).

## Resources

| Resource | Rate | Notes |
| --- | --- | --- |
| Larry Johnson | 47.95 |  |
| Tom Haas | 53.69 | Replace Nick Adams for Task 35, due to Nick Admas's self-isolation. |
| Mark Bedar | 33.01 |  |
| Rick Murray | 28.01 |  |
| Nick Adams | 43.63 | In self-isolation since 11-17-2021, due to exposure to a Covid-19 test positive individual. Tom Haas replaces him for Task 35 |
| Jason Lu | 28.87 |  |
| Kyle Vincent | 33.01 |  |
| Beth Watson | 28.01 |  |
| Matt Larson | 43.63 | Resigned. last date: Nov 12, 2021. Replaced by Oliver Smith starting on Task 27 |
| Edward Mason | 68.99 |  |
| Oliver Smith | 37.9 | Repalced Matt Larson, starting from Task 27. |
| Ryan Fletcher | 48.03 | Replaced Mark Bedar on Task 23 sue to Mark Bedar reassigned to a higher priority project. |
| TCI | 40 | TCI, Tech Consulting Inc. a consulting firm that specializes get the best deal on technological products for businesses. This is an outsourcing contractor that replaced the internal engineers Larry Johnson and Tom Haas who were initially assigned for negotiating prices and Terms and compile vendor offers. The Rate for TCI is lower than the rate of either internal engineers. |
| <New Resource> |  |  |

## Schedule

| ID | WBS | Task | Type | Duration | Start | Finish | Predecessors | Baseline start | Baseline finish | Baseline duration | Total slack | Resources | Work | Cost | Baseline cost |
| --- | --- | --- | --- | --- | --- | --- | --- | --- | --- | --- | --- | --- | --- | --- | --- |
| 1 | 1 | **Security Infrastructure** |  | 35d | 2021-10-11 | 2021-11-30 |  | 2021-10-11 | 2021-11-30 | 35d | 0d |  | 616h | 26,289.12 | 26,289.12 |
| 2 | 1.1 | **Phase 1 - Design Infrastructure** |  | 21d | 2021-10-11 | 2021-11-08 |  | 2021-10-11 | 2021-11-08 | 21d | 0d |  | 360h | 15,416.72 | 15,416.72 |
| 3 | 1.1.1 | **Assess Network Environment** |  | 4d | 2021-10-11 | 2021-10-14 |  | 2021-10-11 | 2021-10-14 | 4d | 0d |  | 112h | 3,596.8 | 3,596.8 |
| 4 | 1.1.1.1 | Document external users | manual | 3d | 2021-10-11 | 2021-10-13 |  | 2021-10-11 | 2021-10-13 | 3d |  | Beth Watson; Rick Murray | 48h | 1,344.48 | 1,344.48 |
| 5 | 1.1.1.2 | Document desktop environment | manual | 3d | 2021-10-12 | 2021-10-14 |  | 2021-10-12 | 2021-10-14 | 3d |  | Jason Lu; Kyle Vincent | 48h | 1,485.12 | 1,485.12 |
| 6 | 1.1.1.3 | Document core services | manual | 2d | 2021-10-13 | 2021-10-14 |  | 2021-10-13 | 2021-10-14 | 2d |  | Larry Johnson | 16h | 767.2 | 767.2 |
| 7 | 1.1.2 | **Identify network related business requirements** |  | 5d | 2021-10-15 | 2021-10-21 | 3 | 2021-10-15 | 2021-10-21 | 5d | 0d |  | 80h | 3,881.44 | 3,881.44 |
| 8 | 1.1.2.1 | Identify requirements for core services | manual | 1d | 2021-10-15 | 2021-10-15 | 6 | 2021-10-15 | 2021-10-15 | 1d |  | Larry Johnson | 8h | 383.6 | 383.6 |
| 9 | 1.1.2.2 | Define employee users' accessibility |  | 2d | 2021-10-15 | 2021-10-18 | 4, 5, 6 | 2021-10-15 | 2021-10-18 | 2d | 0d | Matt Larson; Tom Haas | 32h | 1,557.12 | 1,557.12 |
| 10 | 1.1.2.3 | Define non-employee users' accessibility | manual | 2d | 2021-10-19 | 2021-10-20 | 9 | 2021-10-19 | 2021-10-20 | 2d |  | Matt Larson; Tom Haas | 32h | 1,557.12 | 1,557.12 |
| 11 | 1.1.2.4 | Summarize regulatory compliance |  | 1d | 2021-10-21 | 2021-10-21 | 8, 10 | 2021-10-21 | 2021-10-21 | 1d | 0d | Larry Johnson | 8h | 383.6 | 383.6 |
| 12 | 1.1.3 | **Create preliminary infrastructure schematic** |  | 9d | 2021-10-22 | 2021-11-03 | 7 | 2021-10-22 | 2021-11-03 | 9d | 0d |  | 120h | 5,844.24 | 5,844.24 |
| 13 | 1.1.3.1 | Identify components needed | manual | 3d | 2021-10-22 | 2021-10-26 | 11 | 2021-10-22 | 2021-10-26 | 3d |  | Matt Larson [50%]; Nick Adams [50%] | 24h | 1,047.12 | 1,047.12 |
| 14 | 1.1.3.2 | Identify placement of components | manual | 1d | 2021-10-27 | 2021-10-27 | 13 | 2021-10-27 | 2021-10-27 | 1d |  | Nick Adams [50%]; Matt Larson [50%] | 8h | 349.04 | 349.04 |
| 15 | 1.1.3.3 | Generate preliminary schematic | manual | 1d | 2021-10-28 | 2021-10-28 | 14 | 2021-10-28 | 2021-10-28 | 1d |  | Nick Adams; Matt Larson | 16h | 698.08 | 698.08 |
| 16 | 1.1.3.4 | Review schematic with all departments | manual | 4d | 2021-10-29 | 2021-11-03 | 15 | 2021-10-29 | 2021-11-03 | 4d |  | Edward Mason [75%]; Nick Adams [50%]; Matt Larson | 72h | 3,750 | 3,750 |
| 17 | 1.1.4 | **Finalize Infrastructure Schematic** |  | 3d | 2021-11-04 | 2021-11-08 | 12 | 2021-11-04 | 2021-11-08 | 3d | 0d |  | 48h | 2,094.24 | 2,094.24 |
| 18 | 1.1.4.1 | Make changes on schematic | manual | 2d | 2021-11-04 | 2021-11-05 | 16 | 2021-11-04 | 2021-11-05 | 2d |  | Nick Adams; Matt Larson | 32h | 1,396.16 | 1,396.16 |
| 19 | 1.1.4.2 | Document final schematic | manual | 1d | 2021-11-08 | 2021-11-08 | 18 | 2021-11-08 | 2021-11-08 | 1d |  | Nick Adams; Matt Larson | 16h | 698.08 | 698.08 |
| 20 | 1.2 | **Phase 2 - Determine specifications and identify vendors** |  | 14d | 2021-11-09 | 2021-11-30 | 2 | 2021-11-09 | 2021-11-30 | 14d | 0d |  | 256h | 10,872.4 | 10,872.4 |
| 21 | 1.2.1 | **Determine required features of components** |  | 2d | 2021-11-09 | 2021-11-10 | 17 | 2021-11-09 | 2021-11-10 | 2d | 0d |  | 80h | 3,380 | 3,380 |
| 22 | 1.2.1.1 | Determine desired features of hardware | manual | 2d | 2021-11-09 | 2021-11-10 | 19 | 2021-11-09 | 2021-11-10 | 2d |  | Nick Adams; Larry Johnson [50%] | 24h | 1,081.68 | 1,081.68 |
| 23 | 1.2.1.2 | Determine desired features of software | manual | 2d | 2021-11-09 | 2021-11-10 | 19 | 2021-11-09 | 2021-11-10 | 2d |  | Matt Larson; Ryan Fletcher | 32h | 1,466.56 | 1,466.56 |
| 24 | 1.2.1.3 | Determine desired features for core Cloud services | manual | 2d | 2021-11-09 | 2021-11-10 | 19 | 2021-11-09 | 2021-11-10 | 2d |  | Rick Murray; Larry Johnson [50%] | 24h | 831.76 | 831.76 |

| ID | WBS | Task | Type | Duration | Start | Finish | Predecessors | Baseline start | Baseline finish | Baseline duration | Total slack | Constraint | Resources | Work | Cost | Baseline cost |
| --- | --- | --- | --- | --- | --- | --- | --- | --- | --- | --- | --- | --- | --- | --- | --- | --- |
| 25 | 1.2.2 | **Identify vendors of components** |  | 5d | 2021-11-11 | 2021-11-17 | 21 | 2021-11-11 | 2021-11-17 | 5d | 0d |  |  | 104h | 4,173.44 | 4,173.44 |
| 26 | 1.2.2.1 | Identify options for hardware components | manual | 3d | 2021-11-11 | 2021-11-15 | 22 | 2021-11-11 | 2021-11-15 | 3d |  |  | Nick Adams | 24h | 1,047.12 | 1,047.12 |
| 27 | 1.2.2.2 | Identify opetions for software components | manual | 4d | 2021-11-11 | 2021-11-16 | 23 | 2021-11-11 | 2021-11-16 | 4d |  |  | Oliver Smith | 32h | 1,212.8 | 1,212.8 |
| 28 | 1.2.2.3 | Identify options for core Cloud services | manual | 2d | 2021-11-11 | 2021-11-12 | 24 | 2021-11-11 | 2021-11-12 | 2d |  |  | Rick Murray | 16h | 448.16 | 448.16 |
| 29 | 1.2.2.4 | Select vendor/model for hardware | manual | 1d | 2021-11-16 | 2021-11-16 | 26 | 2021-11-16 | 2021-11-16 | 1d |  |  | Nick Adams; Tom Haas [50%] | 12h | 563.8 | 563.8 |
| 30 | 1.2.2.5 | Select vendor/version for software | manual | 1d | 2021-11-17 | 2021-11-17 | 27 | 2021-11-17 | 2021-11-17 | 1d |  |  | Tom Haas [50%]; Oliver Smith | 12h | 517.96 | 517.96 |
| 31 | 1.2.2.6 | Select providers for core Cloud services | manual | 1d | 2021-11-15 | 2021-11-15 | 28 | 2021-11-15 | 2021-11-15 | 1d |  |  | Larry Johnson | 8h | 383.6 | 383.6 |
| 32 | 1.2.3 | **Document information on selected components** |  | 7d | 2021-11-18 | 2021-11-30 | 25 | 2021-11-18 | 2021-11-30 | 7d | 0d |  |  | 72h | 3,318.96 | 3,318.96 |
| 33 | 1.2.3.1 | Negotiate Prices and Terms | manual | 3d | 2021-11-18 | 2021-11-22 | 29, 30, 31 | 2021-11-18 | 2021-11-22 | 3d |  | start no earlier than 2021-11-18 | TCI | 24h | 960 | 960 |
| 34 | 1.2.3.2 | Create a report on components | manual | 2d | 2021-11-23 | 2021-11-24 | 33 | 2021-11-23 | 2021-11-24 | 2d |  |  | Larry Johnson; Tom Haas | 32h | 1,626.24 | 1,626.24 |
| 35 | 1.2.3.3 | Prepare purchase requests | manual | 2d | 2021-11-29 | 2021-11-30 | 34 | 2021-11-29 | 2021-11-30 | 2d |  | start no earlier than 2021-11-29 | Oliver Smith [50%]; Tom Haas [50%] | 16h | 732.72 | 732.72 |
